Schedule from Planner, 2025-04-01 to 2026-04-29.

## Calendars

- Default: Mon-Fri 08:00-12:00, 13:00-17:00; Sat-Sun off.
- Default: Mon-Fri 08:00-12:00, 13:00-17:00; Sat-Sun off.
- Default: Mon-Fri 08:00-12:00, 13:00-17:00; Sat-Sun off.
- Default: Mon-Fri 08:00-12:00, 13:00-17:00; Sat-Sun off.
- Default: Mon-Fri 08:00-12:00, 13:00-17:00; Sat-Sun off.
- Default: Mon-Fri 08:00-12:00, 13:00-17:00; Sat-Sun off.
- Default: Mon-Fri 08:00-12:00, 13:00-17:00; Sat-Sun off.
- Default: Mon-Fri 08:00-12:00, 13:00-17:00; Sat-Sun off.
- Default: Mon-Fri 08:00-12:00, 13:00-17:00; Sat-Sun off.

## Resources

| Resource | Group |
| --- | --- |
| Electrical Engeneering Team | Kaklik |
| Mechanical Engeneering Team | Roman |
| .. |  |
| Scientific Team | Ondra |
| .. |  |
| Firware Developers | Vitek |
| .. |  |
| Support Team | Iva |
| .. |  |
| Project Management | Iva |
| UST | Kaklik |
| .. |  |
| PR Team | Kosmonautix |

## Schedule

| ID | WBS | Task | Type | Duration | Start | Finish | Predecessors | Resources | Work |
| --- | --- | --- | --- | --- | --- | --- | --- | --- | --- |
| 1 | 1 | KO | milestone | 0d | 2025-04-01 | 2025-04-01 |  |  |  |
| 2 | 2 | **Analysis and Design** |  | 80d | 2025-04-01 | 2025-07-21 |  |  | 960h |
| 3 | 2.1 | Review of current FM (TRL9) |  | 20d | 2025-04-01 | 2025-04-28 |  | Electrical Engeneering Team [50%]; Mechanical Engeneering Team [50%]; Scientific Team [50%] | 240h |
| 4 | 2.2 | Mechanical and thermal redesign |  | 30d | 2025-04-29 | 2025-06-09 | 3 | Mechanical Engeneering Team | 240h |
| 5 | 2.3 | Electrical redesign |  | 30d | 2025-04-29 | 2025-06-09 | 3 | Electrical Engeneering Team | 240h |
| 6 | 2.4 | Wearing design |  | 30d | 2025-06-10 | 2025-07-21 | 4, 3 | Mechanical Engeneering Team | 240h |
| 7 | 2.5 | SSR (System Requirement Review) | milestone | 0d | 2025-06-09 | 2025-06-09 | 5 |  |  |
| 8 | 3 | **Manufacturing and Testing EM** |  | 90d | 2025-06-10 | 2025-10-13 |  |  | 1440h |
| 9 | 3.1 | EM manufacturing (TRL7) |  | 30d | 2025-06-10 | 2025-07-21 | 7 | UST | 240h |
| 10 | 3.2 | Battery module EQM manufacturing (TRL6) |  | 30d | 2025-06-10 | 2025-07-21 | 7 | UST | 240h |
| 11 | 3.3 | FW development |  | 60d | 2025-07-22 | 2025-10-13 | 10 | Firware Developers | 480h |
| 12 | 3.4 | Testing |  | 30d | 2025-07-22 | 2025-09-01 | 9, 10 | Electrical Engeneering Team; Mechanical Engeneering Team | 480h |
| 13 | 3.5 | MRR (Manufacturing Readiness Reviev) | milestone | 0d | 2025-09-01 | 2025-09-01 | 12 |  |  |
| 14 | 4 | **Manufacturing and Testing PFM** |  | 180d | 2025-07-22 | 2026-03-30 |  |  | 2283h |
| 15 | 4.1 | PFM manufacturing |  | 30d | 2025-09-02 | 2025-10-13 | 17, 13 | UST | 240h |
| 16 | 4.2 | GM/ TrM | milestone | 0d | 2025-10-13 | 2025-10-13 | 17, 15 |  |  |
| 17 | 4.3 | Wearing accessories manufacturing |  | 30d | 2025-07-22 | 2025-09-01 | 6 | UST | 240h |
| 18 | 4.4 | Transport package design |  | 14d | 2025-10-14 | 2025-10-31 | 15 | Mechanical Engeneering Team | 112h |
| 19 | 4.5 | Transport package manufacturing |  | 30d | 2025-11-03 | 2025-12-12 | 18 | UST | 240h |
| 20 | 4.6 | Calibration |  | 30d | 2025-11-25 | 2026-01-05 | 36, 15 | Scientific Team | 240h |
| 21 | 4.7 | Testing |  | 57.11d | 2026-01-06 | 2026-03-26 | 20 | Electrical Engeneering Team [80%]; Mechanical Engeneering Team [80%] | 731h |
| 22 | 4.8 | Qualification documentation |  | 60d | 2025-10-14 | 2026-01-05 | 16 | Support Team | 480h |
| 23 | 4.9 | QAR (Qualification and Acceptance Review) | milestone | 0d | 2026-03-30 | 2026-03-30 | 33, 22, 21 |  |  |
| 24 | 4.10 | FM | milestone | 0d | 2026-03-30 | 2026-03-30 | 23 |  |  |

| ID | WBS | Task | Type | Duration | Start | Finish | Predecessors | Resources | Work |
| --- | --- | --- | --- | --- | --- | --- | --- | --- | --- |
| 25 | 5 | **Dosimetry Display Unit (DDU) demonstrator** |  | 260d | 2025-04-01 | 2026-03-30 |  |  | 1680h |
| 26 | 5.1 | Review of current prototype (TRL6) |  | 20d | 2025-04-01 | 2025-04-28 |  | Electrical Engeneering Team [50%]; Mechanical Engeneering Team [50%]; Scientific Team [50%] | 240h |
| 27 | 5.2 | DDU electrical redesign & Dosimeter extra PCB design |  | 30d | 2025-09-02 | 2025-10-13 | 12, 26 | Electrical Engeneering Team | 240h |
| 28 | 5.3 | DDU mechanical redesign |  | 30d | 2025-09-02 | 2025-10-13 | 12 | Mechanical Engeneering Team | 240h |
| 29 | 5.4 | DDU FW redesign |  | 60d | 2025-10-14 | 2026-01-05 | 27, 26 | Firware Developers | 480h |
| 30 | 5.5 | DDU EQM Manufacturing |  | 30d | 2025-10-14 | 2025-11-24 | 28 | UST | 240h |
| 31 | 5.6 | DDU EQM | milestone | 0d | 2026-01-05 | 2026-01-05 | 29, 30 |  |  |
| 32 | 5.7 | DDU Testing |  | 60d | 2026-01-06 | 2026-03-30 | 31, 30 | Support Team [50%] | 240h |
| 33 | 5.8 | DDU FM | milestone | 0d | 2026-03-30 | 2026-03-30 | 32 |  |  |
| 34 | 6 | **Operations Preparation** |  | 258d | 2025-04-29 | 2026-04-23 |  |  | 1872h |
| 35 | 6.1 | Detector response simulation |  | 60d | 2025-04-29 | 2025-07-21 | 3 | Scientific Team | 480h |
| 36 | 6.2 | Development of Hp calculation method |  | 60d | 2025-09-02 | 2025-11-24 | 45 | Scientific Team | 480h |
| 37 | 6.3 | Hp calculation method verification |  | 50d | 2026-01-06 | 2026-03-16 | 20 | Scientific Team [80%] | 320h |
| 38 | 6.4 | Operating manual & Worksheets |  | 40d | 2026-01-06 | 2026-03-02 | 31, 15 | Support Team [50%] | 160h |
| 39 | 6.5 | Support of crew training |  | 28d | 2026-03-03 | 2026-04-09 | 38 | Support Team [50%] | 112h |
| 40 | 6.6 | Payload integration |  | 50d | 2026-01-06 | 2026-03-16 | 31, 16 | Electrical Engeneering Team [20%]; Mechanical Engeneering Team [20%] | 160h |
| 41 | 6.7 | Support to real time works |  | 10d | 2026-04-10 | 2026-04-23 | 42, 39, 24 | Scientific Team; Support Team | 160h |
| 42 | 6.8 | CoFR (Certificate of Flight Readiness) | milestone | 0d | 2026-03-30 | 2026-03-30 | 33, 24, 40, 38 |  |  |
| 43 | 7 | **Outreach** |  | 281.11d | 2025-04-01 | 2026-04-29 |  |  | 2568h |
| 44 | 7.1 | Outreach planning |  | 30d | 2025-04-01 | 2025-05-12 |  | PR Team | 240h |
| 45 | 7.2 | Studens lectures/experiments |  | 30d | 2025-07-22 | 2025-09-01 | 35 | Scientific Team | 240h |
| 46 | 7.3 | Outreach activities |  | 221.11d | 2025-06-24 | 2026-04-29 | 49 | PR Team [90%] | 1592h |
| 47 | 7.4 | Colaboration with ESERO |  | 220d | 2025-06-24 | 2026-04-27 | 49 | PR Team [10%] | 176h |
| 48 | 7.5 | Support of PR materials creation |  | 50d | 2026-01-06 | 2026-03-16 | 20 | Scientific Team [20%] | 80h |
| 49 | 7.6 | Web presentation |  | 30d | 2025-05-13 | 2025-06-23 | 44 | PR Team | 240h |

| ID | WBS | Task | Duration | Start | Finish | Resources | Work |
| --- | --- | --- | --- | --- | --- | --- | --- |
| 50 | 8 | **Project management** | 280d | 2025-04-01 | 2026-04-27 |  | 2240h |
| 51 | 8.1 | Management | 280d | 2025-04-01 | 2026-04-27 | Project Management | 2240h |
